# Spring 2008 Schedule~671

How a schedule from MS Project changed from version to version. A marks actual dates.

## Version 1 (saved 2008-05-27)

Note of the change: Update schedule for after meeting http://jeff.tk/wiki/Trinary/Meeting_Notes_20080527.

| ID | Task | Duration | Start | Finish | Predecessors | Complete | Total float | Constraint |
| --- | --- | --- | --- | --- | --- | --- | --- | --- |
| 1 | Build all unary gates in lab | 0.8w? | 2008-04-01 A | 2008-04-04 A |  | 100% |  | finish no earlier than 2008-04-04 |
| 2 | Build a 3:1 multiplexer | 2.5d? | 2008-04-03 A | 2008-04-07 A | 1 | 100% |  |  |
| 3 | Antonio learn Ltspice | 3d? | 2008-04-02 A | 2008-04-04 A |  | 100% |  | start no earlier than 2008-04-02 |
| 4 | Chirag learn and setup git | 10d? | 2008-04-02 A | 2008-04-13 A |  | 100% |  | finish no earlier than 2008-04-13 |
| 5 | Himanshu administrative tasks | 13d? | 2008-04-01 A | 2008-04-14 A |  | 100% |  | finish no earlier than 2008-04-14 |
| 6 | Expression evaluator working | 1.4w? | 2008-04-01 A | 2008-04-09 A |  | 100% |  | finish no earlier than 2008-04-09 |
| 7 | Senior project proposal due | 1d? | 2008-04-07 A | 2008-04-07 A |  | 100% |  | start no earlier than 2008-04-07 |
| 8 | Build dyadic gates in lab | 0.5w? | 2008-04-08 A | 2008-04-10 A |  | 100% |  | start no earlier than 2008-04-09 |
| 9 | Build ternary cycling gate | 3d? | 2008-04-16 A | 2008-04-18 A |  | 100% |  | finish no earlier than 2008-04-18 |
| 10 | Wiki server RAID 0+1->1 disk upgrades | 7d? | 2008-04-06 A | 2008-04-12 A |  | 100% |  | start no earlier than 2008-04-06 |
| 11 | Honors Open House - decide on timeslot | 11d? | 2008-04-09 A | 2008-04-19 A |  | 100% |  | finish no earlier than 2008-04-19 |
| 12 | Honors Open House Poster Due | 9d? | 2008-04-08 A | 2008-04-16 A |  | 100% |  | finish no earlier than 2008-04-16 |
| 13 | Instruction-level simulator working | 5.5d? | 2008-04-10 A | 2008-04-15 A | 6 | 100% |  |  |
| 14 | Honors Open House Presentation 1:30-2 | 1d? | 2008-04-19 A | 2008-04-19 A |  | 100% |  | finish no earlier than 2008-04-19 |
| 15 | Simulate all tri-flop circuits | 16d? | 2008-04-03 A | 2008-04-21 A |  | 100% |  | finish no earlier than 2008-04-21 |
| 16 | Build dtflop-ms tri-flop circuit | 9.5d? | 2008-04-10 A | 2008-04-19 A |  | 100% |  | finish no earlier than 2008-04-19 |
| 17 | Circuit layout program functional | 8d? | 2008-04-11 A | 2008-04-18 A |  | 100% |  | finish no earlier than 2008-04-18 |
| 18 | Order and receive purchase #3 | 17.5d? | 2008-04-02 A | 2008-04-21 A |  | 100% |  | finish no earlier than 2008-04-16 |
| 19 | Design SP3T footprint for FreePCB | 5d? | 2008-04-21 A | 2008-04-25 A |  | 100% |  | finish no earlier than 2008-04-25 |
| 20 | Label all nodes in LTspice properly | 1d? | 2008-04-21 A | 2008-04-21 A |  | 100% |  | finish no earlier than 2008-05-02 |
| 21 | Decide about reading textbook | 1d? | 2008-04-28 A | 2008-04-28 A |  | 100% |  | finish no earlier than 2008-04-28 |
| 22 | SWROM PCB layout and routing | 5d? | 2008-04-24 A | 2008-04-30 A |  | 100% |  | finish no earlier than 2008-04-30 |
| 23 | Design and simulate ALU | 13d? | 2008-04-21 A | 2008-05-07 A |  | 100% |  | finish no earlier than 2008-05-07 |
| 24 | Expression creator functional | 7d | 2008-04-21 A | 2008-04-29 A |  | 100% |  | finish no earlier than 2008-04-29 |
| 25 | Order PCB for 9-bit SWROM | 10d? | 2008-04-28 A | 2008-05-09 A |  | 100% |  | start no earlier than 2008-04-28 |
| 26 | Retest dtflop-ms in lab | 6d? | 2008-04-28 A | 2008-05-05 A |  | 100% |  | finish no earlier than 2008-05-05 |
| 27 | Layout memory board | 2d? | 2008-05-05 A | 2008-05-06 A |  | 100% |  | finish no earlier than 2008-05-06 |
| 28 | CMP instruction working | 6d? | 2008-05-05 A | 2008-05-12 A |  | 100% |  | finish no earlier than 2008-05-12 |
| 29 | Order PCB of memory board | 2d? | 2008-05-06 A | 2008-05-07 A |  | 100% |  | finish no earlier than 2008-05-07 |
| 30 | Layout mux board | 6d? | 2008-05-05 A | 2008-05-12 A |  | 100% |  | finish no earlier than 2008-05-12 |
| 31 | Order PCB of control board | 1d? | 2008-05-12 A | 2008-05-12 A | 28 | 100% |  | start no earlier than 2008-05-12 |
| 32 | Base 3 converter functional | 16d | 2008-04-21 A | 2008-05-12 A |  | 100% |  | finish no earlier than 2008-05-12 |
| 33 | Chirag install git on MacBook | 6d? | 2008-05-05 A | 2008-05-12 A |  | 100% |  | start no earlier than 2008-05-05 |
| 34 | Honors Progress Report 2 | 2d | 2008-05-06 A | 2008-05-07 A |  | 100% |  | finish no earlier than 2008-05-07 |
| 35 | Layout PCB of logic board | 7d? | 2008-05-11 A | 2008-05-19 A |  | 100% |  | finish no earlier than 2008-05-19 |
| 36 | BE instruction working | 5d? | 2008-05-12 A | 2008-05-16 A |  | 100% |  | finish no earlier than 2008-05-18 |
| 37 | Layout ALU board | 11d? | 2008-05-05 A | 2008-05-19 A |  | 100% |  | finish no earlier than 2008-05-19 |
| 38 | 3-trit high-level language specification | 23d? | 2008-04-28 A | 2008-05-27 A |  | 100% |  | finish no earlier than 2008-05-27 |
| 39 | Jeff - Ch4: Machine Language | 6d? | 2008-04-28 A | 2008-05-05 A |  | 100% |  | finish no earlier than 2008-05-05 |
| 40 | Antonio - Ch7: VM I: Stack Arithmetic | 11d? | 2008-04-28 A | 2008-05-12 A |  | 100% |  | finish no earlier than 2008-05-12 |
| 41 | Jeff - Ch5: Computer Architecture | 6d? | 2008-05-05 A | 2008-05-12 A |  | 100% |  | finish no earlier than 2008-05-12 |
| 42 | Antonio - Ch8: VM II: Program Control | 6d? | 2008-05-05 A | 2008-05-12 A |  | 100% |  | finish no earlier than 2008-05-12 |
| 43 | Antonio - Ch9: High-level Language | 16d? | 2008-05-06 A | 2008-05-26 A |  | 100% |  | finish no earlier than 2008-05-26 |
| 44 | eval.py return 0, i, 1 | 11d? | 2008-04-28 A | 2008-05-12 A |  | 100% |  | finish no earlier than 2008-05-12 |
| 45 | eval.py, allow literals 0, i, 1 | 12d? | 2008-04-29 A | 2008-05-13 A |  | 100% |  | finish no earlier than 2008-05-13 |
| 46 | eval.py, allow trit vectors as inputs | 19d? | 2008-04-29 A | 2008-05-22 A |  | 100% |  | finish no earlier than 2008-05-26 |
| 47 | Jeff - Ch6: Assembler | 6d? | 2008-05-12 A | 2008-05-19 A |  | 100% |  | finish no earlier than 2008-05-19 |
| 48 | CPU simulation, allow graceful termination | 14d? | 2008-05-06 A | 2008-05-22 A |  | 100% |  | finish no earlier than 2008-05-26 |
| 49 | Antonio - Ch10: Compiler I: Syntax Analysis | 11d? | 2008-05-12 A | 2008-05-26 A |  | 100% |  | finish no earlier than 2008-05-26 |
| 50 | Antonio - Enroll in senior project summer | 6d | 2008-05-19 A | 2008-05-26 A |  | 100% |  | start no earlier than 2008-05-19 |
| 51 | Senior project spec & schedule draft due | 6d? | 2008-05-16 A | 2008-05-23 A |  | 100% |  | finish no earlier than 2008-05-23 |
| 52 | Photoshop VTC curve | 26d? | 2008-04-28 A | 2008-05-30 |  | 85% | 65d | finish no earlier than 2008-05-30 |
| 53 | Construct & text mux PCB | 10d | 2008-05-19 A | 2008-05-30 |  | 60% | 65d | finish no earlier than 2008-05-30 |
| 54 | Construct & test dtflop-ms2 PCB | 10d | 2008-05-19 A | 2008-05-30 |  | 60% | 65d | finish no earlier than 2008-05-30 |
| 55 | Design clock generator circuit | 11d? | 2008-05-19 | 2008-06-02 |  |  | 4d | finish no earlier than 2008-06-02 |
| 56 | Antonio - Ch11: Compiler II: Code Generation | 11d? | 2008-05-13 | 2008-05-27 |  |  | 8d | finish no earlier than 2008-05-27 |
| 57 | Find header to add to Trinary/Parts | 6d? | 2008-05-19 A | 2008-05-26 A |  | 100% |  | finish no earlier than 2008-05-26 |
| 58 | Find jumper wires to add to Trinary/Parts | 6d | 2008-05-19 A | 2008-05-26 A |  | 100% |  | start no earlier than 2008-05-19 |
| 59 | Demonstrate simulation of guess.t | 6d? | 2008-05-19 A | 2008-05-26 A |  | 100% |  | finish no earlier than 2008-05-26 |
| 60 | Jeff - Enroll in senior project summer | 10d | 2008-05-19 A | 2008-05-30 |  | 60% | 65d | finish no earlier than 2008-05-30 |
| 61 | Design & order logic board, also order adder & sign boards | 10d? | 2008-05-19 A | 2008-05-30 |  | 40% | 5d | start no earlier than 2008-05-19 |
| 62 | Design adder board | 6d? | 2008-05-19 A | 2008-05-26 A |  | 100% |  | finish no earlier than 2008-05-26 |
| 63 | Design sign board | 6d? | 2008-05-19 A | 2008-05-26 A |  | 100% |  | finish no earlier than 2008-05-26 |
| 64 | Prepare for CSC IAB Presentation | 9d? | 2008-05-20 | 2008-05-30 |  |  | 5d | finish no earlier than 2008-05-30 |
| 65 | Jeff - Make schedule for summer | 4d? | 2008-05-27 A | 2008-05-30 A |  | 100% |  | start no earlier than 2008-05-27 |
| 66 | Chirag - Make schedule for summer | 4d? | 2008-05-27 | 2008-05-30 |  |  | 65d | finish no earlier than 2008-05-30 |
| 67 | Antonio - Make schedule for summer | 4d? | 2008-05-27 | 2008-05-30 |  |  | 65d | finish no earlier than 2008-05-30 |
| 68 | Honors Progress Report Due | 3d? | 2008-05-27 | 2008-05-29 |  |  | 66d | start no earlier than 2008-05-27 |
| 69 | Fix Unicode in tools/eval.py | 5d? | 2008-05-27 | 2008-06-02 |  |  | 64d | finish no earlier than 2008-06-02 |
| 70 | Interface for base converter | 5d? | 2008-05-27 | 2008-06-02 |  |  | 64d | finish no earlier than 2008-06-02 |

| ID | Task | Duration | Start | Finish | Total float | Constraint |
| --- | --- | --- | --- | --- | --- | --- |
| 71 | Base converter: int_cnvrt("10i",-3,10) | 5d? | 2008-05-27 | 2008-06-02 | 64d | finish no earlier than 2008-06-02 |
| 72 | Base converter: int_cnvrt("111",3,10) | 5d? | 2008-05-27 | 2008-06-02 | 64d | finish no earlier than 2008-06-02 |
| 73 | Base converter: to balanced trinary | 5d? | 2008-05-27 | 2008-06-02 | 64d | finish no earlier than 2008-06-02 |
| 74 | Expr creator: replace names with expressions | 5d? | 2008-05-27 | 2008-06-02 | 64d | finish no earlier than 2008-06-02 |
| 75 | Expr creator user interface | 5d? | 2008-05-27 | 2008-06-02 | 64d | finish no earlier than 2008-06-02 |
| 76 | Antonio - Ch12: Operating System | 6d? | 2008-05-26 | 2008-06-02 | 64d | finish no earlier than 2008-06-02 |
| 77 | Honors Final Report Due (9 pm) | 5d? | 2008-06-02 | 2008-06-06 | 60d | finish no earlier than 2008-06-06 |
| 78 | Senior project spec & schedule final due | 6d? | 2008-05-30 | 2008-06-06 | 60d | finish no earlier than 2008-06-06 |
| 79 | Green=Jeff | 1d? | 2008-06-23 | 2008-06-23 | 49d | start no earlier than 2008-06-23 |
| 80 | Jeff - Ch1: Boolean Logic | 6d? | 2008-06-23 | 2008-06-30 | 44d | finish no earlier than 2008-06-30 |
| 81 | Jeff - Ch2: Boolean Arithmetic | 6d? | 2008-06-30 | 2008-07-07 | 39d | finish no earlier than 2008-07-07 |
| 82 | CPE Senior Project Requirements | 6d | 2008-06-30 | 2008-07-07 | 39d | start no earlier than 2008-06-29 |
| 83 | Jeff - Ch3: Sequential Logic | 6d? | 2008-07-07 | 2008-07-14 | 34d | finish no earlier than 2008-07-14 |
| 84 | CPE Analysis of Senior Project Design | 6d | 2008-07-07 | 2008-07-14 | 34d | start no earlier than 2008-07-05 |
| 85 | Clean up website | 6d | 2008-07-14 | 2008-07-21 | 29d | start no earlier than 2008-07-14 |
| 86 | Code review eval.py | 6d | 2008-07-21 | 2008-07-28 | 24d | start no earlier than 2008-07-20 |
| 87 | CPE Report Rough Draft | 12.5d | 2008-07-17 | 2008-08-04 | 19d | finish no earlier than 2008-08-04 |
| 88 | Code review base_converter.py | 6d | 2008-07-28 | 2008-08-04 | 19d | start no earlier than 2008-07-26 |
| 89 | Two-pass assembler | 6d | 2008-08-04 | 2008-08-11 | 14d | start no earlier than 2008-08-04 |
| 90 | Code review CPU simulator | 6d | 2008-08-13 | 2008-08-20 | 7d | start no earlier than 2008-08-13 |
| 91 | CPE Report Finished | 11d? | 2008-08-15 | 2008-08-29 | 0d | finish no earlier than 2008-08-29 |

## Version 2 (saved 2008-06-01)

Note of the change: Merge branch 'master' of git://repo.or.cz/trinary

Last finish 2008-08-29 → 2008-09-15 (+17d). Complete tasks 57 → 63.

Added:

| ID | Task | Duration | Start | Finish | Constraint |
| --- | --- | --- | --- | --- | --- |
| 83 | I/O Board Designed | 6d | 2008-06-23 | 2008-06-30 | finish no earlier than 2008-06-30 |
| 84 | All boards designed | 6d | 2008-06-30 | 2008-07-07 | finish no earlier than 2008-07-07 |
| 86 | Interconnect diagram finished | 12d | 2008-06-30 | 2008-07-15 | start no earlier than 2008-06-30 |
| 95 | Last day of Cal Poly summer classes | 1d? | 2008-08-15 | 2008-08-15 | finish no earlier than 2008-08-15 |
| 96 | Honors funds expended by | 61d? | 2008-06-23 | 2008-09-15 | start no earlier than 2008-06-23 |

Changed:

| ID | Task | Start | Finish | Duration | Complete | Total float | Other |
| --- | --- | --- | --- | --- | --- | --- | --- |
| 60 | Jeff - Enroll in senior project summer |  | 2008-05-30 A |  | 60% → 100% | 65d → none |  |
| 61 | Design & order logic board, also order adder & sign boards |  |  |  | 40% → 50% | 5d → 87d |  |
| 64 | Prepare for CSC IAB Presentation | 2008-05-20 A | 2008-05-30 A |  | 0% → 100% | 5d → none |  |
| 68 | Honors Progress Report Due | 2008-05-27 A | 2008-05-29 A |  | 0% → 100% | 66d → none |  |
| 76 | Jeff - Ch1: Boolean Logic | 2008-06-23 → 2008-05-22 A (-32d) | 2008-06-30 → 2008-05-30 A (-31d) | 6d? → 7d | 0% → 100% | 44d → none | constraint finish no earlier than 2008-06-30 → finish no earlier than 2008-05-30 |
| 77 | Jeff - Ch2: Boolean Arithmetic | 2008-06-30 → 2008-05-22 A (-39d) | 2008-07-07 → 2008-05-30 A (-38d) | 6d? → 7d | 0% → 100% | 39d → none | constraint finish no earlier than 2008-07-07 → finish no earlier than 2008-05-30 |
| 78 | Jeff - Ch3: Sequential Logic | 2008-07-07 → 2008-05-22 A (-46d) | 2008-07-14 → 2008-05-30 A (-45d) | 6d? → 7d | 0% → 100% | 34d → none | constraint finish no earlier than 2008-07-14 → finish no earlier than 2008-05-30 |
| 93 | Code review CPU simulator | 2008-08-13 → 2008-08-08 (-5d) | 2008-08-20 → 2008-08-15 (-5d) |  |  | 7d → 21d | constraint start no earlier than 2008-08-13 → finish no earlier than 2008-08-15 |
| 94 | CPE Report Finished | 2008-08-15 → 2008-08-01 (-14d) | 2008-08-29 → 2008-08-15 (-14d) |  |  | 0d → 32d | constraint finish no earlier than 2008-08-29 → finish no earlier than 2008-08-15 |

## Version 3 (saved 2008-06-02)

Note of the change: Schedule: add Antonio adding 19,683 expressions.

Last finish stays 2008-09-15. Complete tasks 63 → 67.

Added:

| ID | Task | Duration | Start | Finish | Constraint |
| --- | --- | --- | --- | --- | --- |
| 88 | Extended CPU assembler functional | 16d? | 2008-06-23 | 2008-07-14 | start no earlier than 2008-06-23 |
| 89 | Extended CPU simulator functional | 16d? | 2008-06-23 | 2008-07-14 | finish no earlier than 2008-07-14 |
| 90 | Expr creator: generate expr for all 19683 dyadic functions | 16d? | 2008-06-23 | 2008-07-14 | start no earlier than 2008-06-23 |
| 92 | Parser and tokenizer functional | 6d? | 2008-07-14 | 2008-07-21 | finish no earlier than 2008-07-21 |
| 94 | Compiler structure planned | 6d? | 2008-07-21 | 2008-07-28 | finish no earlier than 2008-07-28 |
| 95 | Control flow graph generated | 6d? | 2008-07-21 | 2008-07-28 | finish no earlier than 2008-07-28 |
| 97 | ILOC generated | 11d? | 2008-07-21 | 2008-08-04 | finish no earlier than 2008-08-04 |
| 98 | ILOC -> trinary assembly | 6d? | 2008-07-28 | 2008-08-04 | start no earlier than 2008-07-28 |
| 101 | Compiler register allocation complete | 6d? | 2008-08-04 | 2008-08-11 | finish no earlier than 2008-08-11 |
| 104 | Compiler functional | 11d? | 2008-08-01 | 2008-08-15 | start no earlier than 2008-08-01 |

Changed:

| ID | Task | Start | Finish | Duration | Complete | Total float | Other |
| --- | --- | --- | --- | --- | --- | --- | --- |
| 52 | Antonio - Ch11: Compiler II: Code Generation | 2008-05-13 A | 2008-05-27 A |  | 0% → 100% | 8d → none |  |
| 61 | Antonio - Make schedule for summer | 2008-05-27 A | 2008-05-30 A |  | 0% → 100% | 65d → none |  |
| 66 | Antonio - Ch12: Operating System | 2008-05-26 A | 2008-06-02 A |  | 0% → 100% | 64d → none |  |
| 67 | Chirag - Construct & text mux PCB |  | 2008-05-30 A |  | 60% → 100% | 65d → none | was named Construct & text mux PCB |
| 68 | Chirag - Photoshop VTC curve |  |  |  |  | 65d → 76d | was named Photoshop VTC curve |
| 69 | Chirag - Construct & test dtflop-ms2 PCB |  |  |  |  | 65d → 76d | was named Construct & test dtflop-ms2 PCB |
| 70 | Chirag - Design clock generator circuit |  |  |  |  | 4d → 75d | was named Design clock generator circuit |
| 71 | Chirag - Design & order logic board, also order adder & sign boards |  |  |  |  | 87d → 76d | was named Design & order logic board, also order adder & sign boards |
| 73 | Honors Final Report Due (9 pm) | 2008-06-02 A |  |  | 0% → 33% | 60d → 71d |  |
| 74 | Senior project spec & schedule final due | 2008-05-30 A |  |  | 0% → 50% | 60d → 71d |  |
| 75 | Green=Jeff, Red=Antonio |  |  |  |  | 49d → 60d | was named Green=Jeff |
| 76 | I/O board designed |  |  |  |  | 44d → 55d | was named I/O Board Designed |
| 77 | Fix Unicode in tools/eval.py |  | 2008-06-02 → 2008-06-30 (+28d) | 5d? → 25d? |  | 64d → 55d | constraint finish no earlier than 2008-06-02 → finish no earlier than 2008-06-30 |
| 78 | Interface for base converter |  | 2008-06-02 → 2008-06-30 (+28d) | 5d? → 25d? |  | 64d → 55d | constraint finish no earlier than 2008-06-02 → finish no earlier than 2008-06-30 |
| 79 | Base converter: int_cnvrt("10i",-3,10) |  | 2008-06-02 → 2008-06-30 (+28d) | 5d? → 25d? |  | 64d → 55d | constraint finish no earlier than 2008-06-02 → finish no earlier than 2008-06-30 |
| 80 | Base converter: int_cnvrt("111",3,10) |  | 2008-06-02 → 2008-06-30 (+28d) | 5d? → 25d? |  | 64d → 55d | constraint finish no earlier than 2008-06-02 → finish no earlier than 2008-06-30 |
| 81 | Base converter: to balanced trinary |  | 2008-06-02 → 2008-06-30 (+28d) | 5d? → 25d? |  | 64d → 55d | constraint finish no earlier than 2008-06-02 → finish no earlier than 2008-06-30 |
| 82 | Expr creator: replace names with expressions |  | 2008-06-02 → 2008-06-30 (+28d) | 5d? → 25d? |  | 64d → 55d | constraint finish no earlier than 2008-06-02 → finish no earlier than 2008-06-30 |
| 83 | Expr creator user interface |  | 2008-06-02 → 2008-06-30 (+28d) | 5d? → 25d? |  | 64d → 55d | constraint finish no earlier than 2008-06-02 → finish no earlier than 2008-06-30 |
| 84 | Clock board designed |  |  |  |  | 39d → 50d | was named All boards designed |

## Version 4 (saved 2008-06-11)

Note of the change: Merge branch 'master' of git://repo.or.cz/trinary

Last finish stays 2008-09-15.

Added:

| ID | Task | Duration | Start | Finish | Constraint |
| --- | --- | --- | --- | --- | --- |
| 85 | Design clock generator circuit | 6d? | 2008-06-30 | 2008-07-07 | finish no earlier than 2008-07-07 |
| 88 | Construct and test dtflop-ms2 boards | 12d? | 2008-06-30 | 2008-07-15 | start no earlier than 2008-06-30 |
| 89 | Construct and test ALU boards | 12d? | 2008-06-30 | 2008-07-15 | finish no earlier than 2008-07-15 |
| 96 | Construct and test logic board | 6d? | 2008-07-14 | 2008-07-21 | start no earlier than 2008-07-14 |
| 97 | Construct and test I/O board | 6d? | 2008-07-14 | 2008-07-21 | finish no earlier than 2008-07-21 |
| 101 | Begin interconnection of all boards | 6d? | 2008-07-21 | 2008-07-28 | finish no earlier than 2008-07-28 |
| 106 | Test complete CPU | 6d? | 2008-07-28 | 2008-08-04 | start no earlier than 2008-07-28 |
| 112 | Entire system functional and working | 11d? | 2008-08-01 | 2008-08-15 | start no earlier than 2008-08-01 |

Changed:

| ID | Task | Finish | Duration | Complete | Total float | Other |
| --- | --- | --- | --- | --- | --- | --- |
| 86 | Chirag - Photoshop VTC curve | 2008-05-30 → 2008-07-07 (+38d) | 26d? → 52d? | 85% → 60% | 76d → 50d | constraint finish no earlier than 2008-05-30 → finish no earlier than 2008-07-07 |

## Version 5 (saved 2008-06-26)

Note of the change: Update schedule for before http://jeff.tk/wiki/Trinary/Meeting_Notes_20080629 .

Last finish stays 2008-09-15. Complete tasks 67 → 71.

Removed: 69 Chirag - Design clock generator circuit

Changed:

| ID | Task | Start | Finish | Complete | Total float |
| --- | --- | --- | --- | --- | --- |
| 68 | Chirag - Make schedule for summer | 2008-05-27 A | 2008-05-30 A | 0% → 100% | 76d → none |
| 69 | Honors Final Report Due (9 pm) |  | 2008-06-06 A | 33% → 100% | 71d → none |
| 70 | Senior project spec & schedule final due |  | 2008-06-06 A | 50% → 100% | 71d → none |
| 84 | Design clock generator circuit | 2008-06-30 A | 2008-07-07 A | 0% → 100% | 50d → none |

## Version 6 (saved 2008-06-29)

Note of the change: Update for after http://jeff.tk/wiki/Trinary/Meeting_Notes_20080629 .

Last finish stays 2008-09-15. Complete tasks 71 → 75.

Added:

| ID | Task | Duration | Start | Finish | Constraint |
| --- | --- | --- | --- | --- | --- |
| 96 | All boards physically constructed | 67d? | 2008-04-21 A | 2008-07-21 | start no earlier than 2008-04-21 |
| 102 | Verify I/O board footprints | 23d? | 2008-06-30 | 2008-07-30 | start no earlier than 2008-06-30 |

Changed:

| ID | Task | Start | Finish | Duration | Complete | Total float | Other |
| --- | --- | --- | --- | --- | --- | --- | --- |
| 71 | Green=Jeff, Red=Antonio | 2008-06-23 A | 2008-06-23 A |  | 0% → 100% | 60d → none |  |
| 72 | I/O board designed | 2008-06-23 A | 2008-06-30 A |  | 0% → 100% | 55d → none |  |
| 73 | Define ASCII symbols for trinary |  |  |  |  |  | was named Fix Unicode in tools/eval.py |
| 74 | Interface for base converter | 2008-05-27 A | 2008-06-30 A |  | 0% → 100% | 55d → none |  |
| 75 | Base converter: int_cnvrt("111",3,10) | 2008-05-27 A | 2008-06-30 A |  | 0% → 100% | 55d → none |  |
| 76 | Base converter: int_cnvrt("10i",-3,10) |  | 2008-06-30 → 2008-07-06 (+6d) | 25d? → 29d? |  | 55d → 51d | constraint finish no earlier than 2008-06-30 → finish no earlier than 2008-07-06 |
| 77 | Base converter: to balanced trinary |  | 2008-06-30 → 2008-07-06 (+6d) | 25d? → 29d? |  | 55d → 51d | constraint finish no earlier than 2008-06-30 → finish no earlier than 2008-07-06 |
| 83 | Chirag - Photoshop VTC curve |  |  |  | 60% → 88% |  |  |
| 84 | Chirag - Construct & test dtflop-ms2 PCB |  | 2008-05-30 → 2008-07-14 (+45d) | 10d → 41d | 60% → 73% | 76d → 45d | constraint finish no earlier than 2008-05-30 → finish no earlier than 2008-07-14 |
| 100 | Chirag - Design & order logic board, also order adder & sign boards |  | 2008-05-30 → 2008-07-28 (+59d) | 10d? → 51d? | 50% → 59% | 76d → 35d | constraint start no earlier than 2008-05-19 → finish no earlier than 2008-07-28 |

## Version 7 (saved 2008-07-06)

Note of the change: Update for after http://jeff.tk/wiki/Trinary/Meeting_Notes_20080706 .

Last finish stays 2008-09-15. Complete tasks 75 → 78.

Added:

| ID | Task | Duration | Start | Finish | Constraint |
| --- | --- | --- | --- | --- | --- |
| 81 | Logic board designed | 21d? | 2008-06-30 A | 2008-07-28 A | finish no earlier than 2008-07-28 |

Changed:

| ID | Task | Start | Finish | Duration | Complete | Total float | Other |
| --- | --- | --- | --- | --- | --- | --- | --- |
| 73 | Define ASCII symbols for trinary | 2008-05-27 A | 2008-06-30 A |  | 0% → 100% | 55d → none |  |
| 80 | Clock board designed | 2008-06-30 A | 2008-07-07 A |  | 0% → 100% | 50d → none |  |
| 87 | Construct and test ALU boards | 2008-06-30 A |  |  | 0% → 42% |  |  |
| 96 | All boards physically constructed |  |  |  | 76% → 78% |  |  |
| 111 | CPE Senior Project Requirements | 2008-06-30 → 2008-08-01 (+32d) | 2008-07-07 → 2008-08-15 (+39d) | 6d → 11d |  | 39d → 21d | constraint start no earlier than 2008-06-29 → finish no earlier than 2008-08-15 |

## Version 8 (saved 2008-07-07)

Note of the change: Update schedule for final meeting notes at http://jeff.tk/wiki/Trinary/Meeting_Notes_20080706 .

Last finish stays 2008-09-15. Complete tasks 78 → 77.

Added:

| ID | Task | Duration | Start | Finish | Constraint |
| --- | --- | --- | --- | --- | --- |
| 86 | Build & test swrom-fixed | 7d? | 2008-07-04 | 2008-07-14 | finish no earlier than 2008-07-14 |

Changed:

| ID | Task | Finish | Duration | Complete | Total float | Other |
| --- | --- | --- | --- | --- | --- | --- |
| 72 | I/O board designed w/ footprints | 2008-06-30 A → 2008-07-14 (+14d) | 6d → 16d | 100% → 63% | none → 45d | was named I/O board designed; constraint finish no earlier than 2008-06-30 → finish no earlier than 2008-07-14 |
| 103 | Verify I/O board footprints | 2008-07-30 → 2008-07-14 (-16d) | 23d? → 11d? |  | 33d → 45d | constraint start no earlier than 2008-06-30 → finish no earlier than 2008-07-14 |

## Version 9 (saved 2008-07-13)

Note of the change: Update schedule for before http://jeff.tk/wiki/Trinary/Meeting_Notes_20080714 .

Last finish stays 2008-09-15.

Changed:

| ID | Task | Start | Complete |
| --- | --- | --- | --- |
| 85 | Interconnect diagram finished | 2008-06-30 A | 0% → 17% |

## Version 10 (saved 2008-07-20)

Note of the change: Update schedule for before http://jeff.tk/wiki/Trinary/Meeting_Notes_20080720 .

Last finish stays 2008-09-15. Complete tasks 77 → 82.

Added:

| ID | Task | Duration | Start | Finish | Constraint |
| --- | --- | --- | --- | --- | --- |
| 84 | Expr creator document how to use | 6d? | 2008-07-21 | 2008-07-28 | finish no earlier than 2008-07-28 |
| 86 | Find pinout of DP3T chips | 4d? | 2008-07-21 | 2008-07-24 | finish no earlier than 2008-07-24 |
| 87 | TCA0 interconnects documented | 6d? | 2008-07-21 A | 2008-07-28 | finish no earlier than 2008-07-28 |

Removed: 92 Expr creator: generate expr for all 19683 dyadic functions; 101 Chirag - Design & order logic board, also order adder & sign boards

Changed:

| ID | Task | Start | Finish | Duration | Complete | Total float | Other |
| --- | --- | --- | --- | --- | --- | --- | --- |
| 75 | Base converter: int_cnvrt("10i",-3,10) | 2008-05-27 A | 2008-07-06 → 2008-07-14 A (+8d) | 29d? → 35d? | 0% → 100% | 51d → none | constraint finish no earlier than 2008-07-06 → finish no earlier than 2008-07-20 |
| 76 | Base converter: to balanced trinary | 2008-05-27 A | 2008-07-06 → 2008-07-14 A (+8d) | 29d? → 35d? | 0% → 100% | 51d → none | constraint finish no earlier than 2008-07-06 → finish no earlier than 2008-07-20 |
| 80 | Interconnect diagram finished |  | 2008-07-15 A |  | 17% → 100% | 44d → none |  |
| 81 | Expr creator user interface | 2008-05-27 A | 2008-06-30 A |  | 0% → 100% | 55d → none |  |
| 82 | Verify I/O board footprints | 2008-06-30 A | 2008-07-14 A |  | 0% → 100% | 45d → none |  |
| 83 | Expr creator: replace names with expressions |  | 2008-06-30 → 2008-07-28 (+28d) | 25d? → 45d? |  | 55d → 35d | constraint finish no earlier than 2008-06-30 → finish no earlier than 2008-07-28 |
| 85 | I/O board designed w/ footprints |  | 2008-07-14 → 2008-07-28 (+14d) | 16d → 26d | 63% → 54% | 45d → 35d | constraint finish no earlier than 2008-07-14 → finish no earlier than 2008-07-28 |
| 88 | Chirag - Photoshop VTC curve |  | 2008-07-07 → 2008-07-28 (+21d) | 52d? → 67d? | 88% → 75% | 50d → 35d | constraint finish no earlier than 2008-07-07 → finish no earlier than 2008-07-28 |
| 89 | Chirag - Construct & test dtflop-ms2 PCB |  | 2008-07-14 → 2008-07-28 (+14d) | 41d → 51d | 73% → 59% | 45d → 35d | constraint finish no earlier than 2008-07-14 → finish no earlier than 2008-07-28 |
| 90 | Build & test swrom-fixed | 2008-07-04 A | 2008-07-14 → 2008-07-28 (+14d) | 7d? → 17d? | 0% → 59% | 45d → 35d | constraint finish no earlier than 2008-07-14 → finish no earlier than 2008-07-28 |
| 91 | Construct and test dtflop-ms2 boards |  | 2008-07-15 → 2008-07-28 (+13d) | 12d? → 21d? |  | 44d → 35d | constraint start no earlier than 2008-06-30 → finish no earlier than 2008-07-28 |
| 92 | Construct and test ALU boards or not |  | 2008-07-15 → 2008-07-28 (+13d) | 12d? → 21d? | 42% → 24% | 44d → 35d | was named Construct and test ALU boards; constraint finish no earlier than 2008-07-15 → finish no earlier than 2008-07-28 |
| 93 | CPE Analysis of Senior Project Design | 2008-07-07 → 2008-07-21 (+14d) | 2008-07-14 → 2008-07-28 (+14d) |  |  | 45d → 35d | constraint start no earlier than 2008-07-05 → finish no earlier than 2008-07-28 |
| 96 | Clean up website | 2008-07-14 A |  |  | 0% → 33% |  |  |

## Version 11 (saved 2008-07-28)

Note of the change: Merge branch 'master' of git://repo.or.cz/trinary

Last finish stays 2008-09-15. Complete tasks 82 → 91.

Added:

| ID | Task | Duration | Start | Finish | Constraint |
| --- | --- | --- | --- | --- | --- |
| 71 | Green=Jeff, Red=Antonio (below) | 1d? | 2008-06-23 A | 2008-06-23 A | start no earlier than 2008-06-23 |
| 91 | Define new game for TCA0 | 1d? | 2008-07-28 A | 2008-07-28 A | start no earlier than 2008-07-28 |
| 104 | Fix test case failure in eval.py | 1d? | 2008-07-28 | 2008-07-28 | start no earlier than 2008-07-28 |
| 110 | Design output LED circuit | 6d? | 2008-07-28 | 2008-08-04 | finish no earlier than 2008-08-04 |

Removed: 85 I/O board designed w/ footprints; 89 Chirag - Construct & test dtflop-ms2 PCB; 99 Construct and test I/O board

Changed:

| ID | Task | Start | Finish | Duration | Complete | Total float | Other |
| --- | --- | --- | --- | --- | --- | --- | --- |
| 83 | Expr creator: replace names with expressions | 2008-05-27 A | 2008-07-28 A |  | 0% → 100% | 35d → none |  |
| 85 | Find pinout of DP3T chips | 2008-07-21 A | 2008-07-24 A |  | 0% → 100% | 37d → none |  |
| 86 | TCA0 interconnects documented |  | 2008-07-28 A |  | 17% → 100% | 35d → none |  |
| 87 | Construct and test dtflop-ms2 boards | 2008-06-30 A | 2008-07-28 A |  | 0% → 100% | 35d → none |  |
| 88 | Build & test swrom-fixed |  | 2008-07-28 A |  | 59% → 100% | 35d → none |  |
| 89 | Parser and tokenizer functional | 2008-07-14 A | 2008-07-21 A |  | 0% → 100% | 40d → none |  |
| 90 | Code review eval.py | 2008-07-21 A | 2008-07-28 A |  | 0% → 100% | 35d → none |  |
| 92 | Expr creator document how to use | 2008-07-21 A |  |  | 0% → 83% |  |  |
| 93 | Chirag - Photoshop VTC curve |  |  |  | 75% → 76% |  |  |
| 94 | Construct and test ALU boards or not |  |  |  | 24% → 48% |  |  |
| 96 | Extended CPU assembler functional | 2008-06-23 A | 2008-07-14 → 2008-07-30 (+16d) | 16d? → 28d? | 0% → 54% | 45d → 33d | constraint start no earlier than 2008-06-23 → finish no earlier than 2008-07-30 |
| 97 | Extended CPU simulator functional | 2008-06-23 A | 2008-07-14 → 2008-07-30 (+16d) | 16d? → 28d? | 0% → 54% | 45d → 33d | constraint finish no earlier than 2008-07-14 → finish no earlier than 2008-07-30 |
| 98 | Clean up website |  | 2008-07-21 → 2008-08-04 (+14d) | 6d → 16d | 33% → 31% | 40d → 30d | constraint start no earlier than 2008-07-14 → finish no earlier than 2008-08-04 |
| 99 | Construct and test logic board |  | 2008-07-21 → 2008-08-01 (+11d) | 6d? → 15d? |  | 40d → 31d | constraint start no earlier than 2008-07-14 → finish no earlier than 2008-08-01 |
| 100 | All boards physically constructed |  | 2008-07-21 → 2008-08-01 (+11d) | 67d? → 76d? | 78% → 68% | 40d → 31d | constraint start no earlier than 2008-04-21 → finish no earlier than 2008-08-01 |

## Version 12 (saved 2008-08-03)

Note of the change: Update schedule after http://jeff.tk/wiki/Trinary/Meeting_Notes_20080803.

Last finish stays 2008-09-15. Complete tasks 91 → 97.

Changed:

| ID | Task | Start | Finish | Duration | Complete | Total float | Other |
| --- | --- | --- | --- | --- | --- | --- | --- |
| 93 | Chirag - Photoshop VTC curve |  |  |  | 76% → 91% |  |  |
| 94 | Construct and test ALU boards or not |  | 2008-07-28 A |  | 48% → 100% | 35d → none |  |
| 95 | CPE Analysis of Senior Project Design | 2008-07-21 A | 2008-07-28 A |  | 0% → 100% | 35d → none |  |
| 96 | Extended CPU assembler functional |  |  |  | 54% → 89% |  |  |
| 97 | Extended CPU simulator functional |  |  |  | 54% → 89% |  |  |
| 98 | Clean up website |  | 2008-08-04 A |  | 31% → 100% | 30d → none |  |
| 99 | Construct and test logic board | 2008-07-14 A |  |  | 0% → 33% |  |  |
| 100 | All boards physically constructed |  |  |  | 68% → 80% |  |  |
| 101 | Compiler structure planned | 2008-07-21 A | 2008-07-28 A |  | 0% → 100% | 35d → none |  |
| 105 | ILOC generated |  | 2008-08-04 → 2008-08-07 (+3d) | 11d? → 14d? |  | 30d → 27d | constraint finish no earlier than 2008-08-04 → finish no earlier than 2008-08-07 |
| 106 | ILOC -> trinary assembly |  | 2008-08-04 → 2008-08-07 (+3d) | 6d? → 9d? |  | 30d → 27d | constraint start no earlier than 2008-07-28 → finish no earlier than 2008-08-07 |
| 107 | Control flow graph generated |  | 2008-07-28 → 2008-08-04 (+7d) | 6d? → 11d? |  | 35d → 30d | constraint finish no earlier than 2008-07-28 → finish no earlier than 2008-08-04 |
| 108 | Code review base_converter.py | 2008-07-28 A | 2008-08-04 A |  | 0% → 100% | 30d → none |  |
| 110 | Design output LED circuit | 2008-07-28 A | 2008-08-04 A |  | 0% → 100% | 30d → none |  |

## Version 13 (saved 2008-08-11)

Note of the change: Update schedule after http://jeff.tk/wiki/Trinary/Meeting_Notes_20080810

Last finish stays 2008-09-15. Complete tasks 97 → 102.

Added:

| ID | Task | Duration | Start | Finish | Constraint |
| --- | --- | --- | --- | --- | --- |
| 110 | Test trinary output LED circuit | 1d? | 2008-08-11 | 2008-08-11 | start no earlier than 2008-08-11 |
| 112 | CPE Report Final Draft | 6d? | 2008-08-11 | 2008-08-18 | finish no earlier than 2008-08-18 |
| 118 | Submit CPE Report to Undergraduate Research Journal, Volume 2 | 14d? | 2008-08-11 | 2008-08-28 | finish no earlier than 2008-08-28 |

Removed: 109 Test complete CPU; 111 Two-pass assembler

Changed:

| ID | Task | Start | Finish | Duration | Complete | Total float | Other |
| --- | --- | --- | --- | --- | --- | --- | --- |
| 92 | Expr creator document how to use |  | 2008-07-28 A |  | 83% → 100% | 35d → none |  |
| 93 | Chirag - Photoshop VTC curve |  | 2008-07-28 → 2008-08-08 A (+11d) | 67d? → 76d? | 91% → 100% | 35d → none | constraint finish no earlier than 2008-07-28 → finish no earlier than 2008-08-10 |
| 97 | Construct and test logic board |  | 2008-08-01 → 2008-08-04 A (+3d) | 15d? → 16d? | 33% → 100% | 31d → none | constraint finish no earlier than 2008-08-01 → finish no earlier than 2008-08-04 |
| 98 | All boards physically constructed |  | 2008-08-01 → 2008-08-07 A (+6d) | 76d? → 80d? | 80% → 100% | 31d → none | constraint finish no earlier than 2008-08-01 → finish no earlier than 2008-08-07 |
| 100 | CPE Report Rough Draft | 2008-07-17 A | 2008-08-04 A |  | 0% → 100% | 30d → none |  |
| 103 | Extended CPU assembler functional |  | 2008-07-30 → 2008-08-11 (+12d) | 28d? → 36d? | 89% → 83% | 33d → 25d | constraint finish no earlier than 2008-07-30 → finish no earlier than 2008-08-11 |
| 104 | Extended CPU simulator functional |  | 2008-07-30 → 2008-08-11 (+12d) | 28d? → 36d? | 89% → 83% | 33d → 25d | constraint finish no earlier than 2008-07-30 → finish no earlier than 2008-08-11 |
| 105 | Fix test case failure in eval.py | 2008-07-28 A | 2008-07-28 → 2008-08-11 (+14d) | 1d? → 11d? | 0% → 45% | 35d → 25d | constraint start no earlier than 2008-07-28 → finish no earlier than 2008-08-11 |
| 106 | ILOC generated |  | 2008-08-07 → 2008-08-12 (+5d) | 14d? → 17d? |  | 27d → 24d | constraint finish no earlier than 2008-08-07 → finish no earlier than 2008-08-12 |
| 107 | ILOC -> trinary assembly |  | 2008-08-07 → 2008-08-12 (+5d) | 9d? → 12d? |  | 27d → 24d | constraint finish no earlier than 2008-08-07 → finish no earlier than 2008-08-12 |
| 108 | Control flow graph generated |  | 2008-08-04 → 2008-08-12 (+8d) | 11d? → 17d? |  | 30d → 24d | constraint finish no earlier than 2008-08-04 → finish no earlier than 2008-08-12 |
| 109 | Finish interconnection of all boards | 2008-07-21 → 2008-08-12 (+22d) | 2008-07-28 → 2008-08-19 (+22d) |  |  | 35d → 19d | was named Begin interconnection of all boards; constraint finish no earlier than 2008-07-28 → finish no earlier than 2008-08-19 |
| 111 | Compiler register allocation complete | 2008-08-04 → 2008-08-08 (+4d) | 2008-08-11 → 2008-08-15 (+4d) |  |  | 25d → 21d | constraint finish no earlier than 2008-08-11 → finish no earlier than 2008-08-15 |
| 114 | CPE Senior Project Requirements | 2008-08-01 → 2008-07-29 (-3d) | 2008-08-15 → 2008-08-18 (+3d) | 11d → 15d |  | 21d → 20d | constraint finish no earlier than 2008-08-15 → finish no earlier than 2008-08-18 |
| 115 | CPE Report Finished | 2008-08-01 → 2008-08-04 (+3d) | 2008-08-15 → 2008-08-18 (+3d) |  |  | 21d → 20d | constraint finish no earlier than 2008-08-15 → finish no earlier than 2008-08-18 |
| 117 | Entire system functional and working |  | 2008-08-15 → 2008-08-22 (+7d) | 11d? → 16d? |  | 21d → 16d | constraint start no earlier than 2008-08-01 → finish no earlier than 2008-08-22 |
| 119 | Last day of Cal Poly summer classes |  | 2008-08-15 → 2008-08-29 (+14d) | 1d? → 11d? |  | 21d → 11d | constraint finish no earlier than 2008-08-15 → finish no earlier than 2008-08-29 |

## Version 14 (saved 2008-08-27)

Note of the change: Update schedule after http://jeff.tk/wiki/Trinary/Meeting_Notes_20080824#Updated_schedule_after_meeting. This is the version of the PDF uploaded to http://jeff.tk/wiki/Image:2008_Spring-Summer_Schedule.pdf.

Last finish stays 2008-09-15. Complete tasks 102 → 107.

Changed:

| ID | Task | Start | Finish | Duration | Complete | Total float | Other |
| --- | --- | --- | --- | --- | --- | --- | --- |
| 103 | Extended CPU assembler functional |  | 2008-08-11 A |  | 83% → 100% | 25d → none |  |
| 104 | Extended CPU simulator functional |  | 2008-08-11 A |  | 83% → 100% | 25d → none |  |
| 105 | Fix test case failure in eval.py |  | 2008-08-11 A |  | 45% → 100% | 25d → none |  |
| 106 | ILOC generated | 2008-07-21 A | 2008-08-12 → 2008-08-18 (+6d) | 17d? → 21d? | 0% → 48% | 24d → 20d | constraint finish no earlier than 2008-08-12 → finish no earlier than 2008-08-18 |
| 107 | ILOC -> trinary assembly | 2008-07-28 A | 2008-08-12 → 2008-08-18 (+6d) | 12d? → 16d? | 0% → 31% | 24d → 20d | constraint finish no earlier than 2008-08-12 → finish no earlier than 2008-08-18 |
| 108 | Control flow graph generated | 2008-07-21 A | 2008-08-12 → 2008-08-18 (+6d) | 17d? → 21d? | 0% → 24% | 24d → 20d | constraint finish no earlier than 2008-08-12 → finish no earlier than 2008-08-18 |
| 109 | Finish interconnection of all boards | 2008-08-12 → 2008-08-15 A (+3d) | 2008-08-19 → 2008-08-22 (+3d) |  | 0% → 17% | 19d → 16d | constraint finish no earlier than 2008-08-19 → finish no earlier than 2008-08-22 |
| 110 | Test trinary output LED circuit | 2008-08-11 → 2008-08-15 A (+4d) | 2008-08-11 → 2008-08-22 (+11d) | 1d? → 6d? | 0% → 17% | 25d → 16d | constraint start no earlier than 2008-08-11 → start no earlier than 2008-08-15 |
| 111 | Compiler register allocation complete | 2008-08-08 → 2008-08-15 (+7d) | 2008-08-15 → 2008-08-23 (+8d) |  |  | 21d → 16d | constraint finish no earlier than 2008-08-15 → finish no earlier than 2008-08-23 |
| 112 | CPE Report Final Draft | 2008-08-11 A | 2008-08-18 → 2008-08-15 A (-3d) | 6d? → 5d? | 0% → 100% | 20d → none | constraint finish no earlier than 2008-08-18 → finish no earlier than 2008-08-17 |
| 113 | Code review CPU simulator | 2008-08-08 A | 2008-08-15 A |  | 0% → 100% | 21d → none |  |
| 114 | CPE Senior Project Requirements | 2008-07-29 → 2008-08-11 A (+13d) | 2008-08-18 → 2008-08-29 (+11d) |  | 0% → 33% | 20d → 11d | constraint finish no earlier than 2008-08-18 → finish no earlier than 2008-08-29 |
| 115 | CPE Report Finished | 2008-08-04 → 2008-08-15 A (+11d) | 2008-08-18 → 2008-08-29 (+11d) |  | 0% → 55% | 20d → 11d | constraint finish no earlier than 2008-08-18 → finish no earlier than 2008-08-29 |
